# NBIA 5.0

Schedule from MS Project, 2010-09-27 to 2011-04-01, A marks actual dates.
NCI

## Calendars

- Standard: Mon-Fri 08:00-12:00, 13:00-17:00; Sat-Sun off. Exceptions (off unless hours are given): 2010-11-25 to 2010-11-26, 2010-12-24, 2010-12-27 (d).

## Resources

| Resource |
| --- |
| Eric |
| Jim |
| 3 |
| Qinyan |
| Quy |
| Anna |
| Prakash |
| Eric2 |
| Brian |
| Prakash2 |

## Schedule

| ID | WBS | Task | Type | Duration | Start | Finish | Predecessors | Complete | Total slack | Constraint | Resources | Work | Actual work |
| --- | --- | --- | --- | --- | --- | --- | --- | --- | --- | --- | --- | --- | --- |
| 1 | 1 | Ivy Repository Migration |  | 1w | 2010-09-27 A | 2010-10-01 A |  | 100% |  |  | Eric | 40h | 40h |
| 2 | 2 | **Data Access Enhancements** |  | 28d | 2010-10-04 A | 2010-11-10 A |  | 100% |  |  |  | 304h | 304h |
| 3 | 2.1 | Split webapp dao-business logic |  | 1w | 2010-10-04 A | 2010-10-08 A |  | 100% |  |  | Eric | 40h | 40h |
| 4 | 2.2 | Capture baseline benchmarks |  | 1w | 2010-10-04 A | 2010-10-08 A |  | 100% |  |  | Jim | 40h | 40h |
| 5 | 2.3 | Introduce Spring data access into CTP |  | 2w | 2010-10-04 A | 2010-10-15 A |  | 100% |  |  | Jim | 80h | 80h |
| 6 | 2.4 | Post-Spring Benchmarks |  | 2d | 2010-10-18 A | 2010-10-19 A | 5 | 100% |  |  | Jim | 16h | 16h |
| 7 | 2.5 | CTP upgrade to X42 |  | 1w | 2010-10-20 A | 2010-10-26 A |  | 100% |  |  | Jim | 40h | 40h |
| 8 | 2.6 | Introduce Spring data access into webapp |  | 2w | 2010-10-11 A | 2010-10-22 A | 3 | 100% |  |  | Jim | 80h | 80h |
| 9 | 2.7 | Evaluate possibility of merging CTP-webapp data access |  | 1d | 2010-11-10 A | 2010-11-10 A |  | 100% |  |  | Jim | 8h | 8h |
| 10 | 3 | **Oracle Support** |  | 25d | 2010-10-11 A | 2010-11-12 A |  | 100% |  |  |  | 280h | 280h |
| 11 | 3.1 | Translate Schema |  | 2w | 2010-10-11 A | 2010-10-22 A |  | 100% |  |  | Eric | 80h | 80h |
| 12 | 3.2 | Setup/Request new Oracle instance with migration |  | 2w | 2010-10-25 A | 2010-11-05 A | 11 | 100% |  |  | Eric2 | 80h | 80h |
| 13 | 3.3 | Translate custom SQL in Hibernate mappings |  | 1w | 2010-10-25 A | 2010-10-29 A |  | 100% |  |  | Eric | 40h | 40h |
| 14 | 3.4 | Setup Oracle-specific Liquibase configuration |  | 2d | 2010-11-01 A | 2010-11-02 A |  | 100% |  |  | Eric | 16h | 16h |
| 15 | 3.5 | Custom SQL in patient search |  | 2d | 2010-11-03 A | 2010-11-04 A |  | 100% |  |  | Eric | 16h | 16h |
| 16 | 3.6 | Custom SQL in submission history |  | 2d | 2010-11-05 A | 2010-11-08 A |  | 100% |  |  | Eric | 16h | 16h |
| 17 | 3.7 | Deployment Scripts and GUI Installer |  | 4d | 2010-11-09 A | 2010-11-12 A | 16 | 100% |  |  | Eric | 32h | 32h |
| 18 | 4 | **Ultrasound search (Round 1)** |  | 37d | 2010-09-27 A | 2010-11-16 A |  | 100% |  |  |  | 296h | 296h |
| 19 | 4.1 | General Research |  | 1w | 2010-09-27 A | 2010-10-01 A |  | 100% |  |  | Qinyan | 40h | 40h |
| 20 | 4.2 | Map SME requirements to concrete DICOM tags and wireframe |  | 2w | 2010-10-04 A | 2010-10-15 A |  | 100% |  |  | Qinyan | 80h | 80h |
| 21 | 4.3 | Customize Classic Search UI to include US fields |  | 1w | 2010-10-18 A | 2010-10-22 A |  | 100% |  |  | Qinyan | 40h | 40h |
| 22 | 4.4 | Customize view series page to handle ultrasound |  | 2w | 2010-10-25 A | 2010-11-05 A |  | 100% |  |  | Qinyan | 80h | 80h |
| 23 | 4.5 | Map DICOM tags to NBIA internal domain model (includes code changes) |  | 7d | 2010-11-08 A | 2010-11-16 A |  | 100% |  |  | Qinyan | 56h | 56h |
| 24 | 5 | ****** SCOPE NAILED DOWN ****** | milestone | 0d | 2010-09-27 | 2010-09-27 |  |  | 66d |  |  |  |  |
| 25 | 6 | HL7 v3 Training |  | 2d | 2010-11-15 A | 2010-11-16 A |  | 100% |  | must start on 2010-11-15 | Eric | 16h | 16h |
| 26 | 7 | LIDC annotation of annotation re-generation |  | 5d | 2010-11-16 A | 2010-11-22 A |  | 100% |  | must start on 2010-11-16 | Qinyan | 40h | 40h |

| ID | WBS | Task | Duration | Start | Finish | Predecessors | Complete | Remaining | Total slack | Constraint | Resources | Work | Actual work |
| --- | --- | --- | --- | --- | --- | --- | --- | --- | --- | --- | --- | --- | --- |
| 27 | 8 | **Ultrasound Search (Round 2)** | 12d | 2010-11-16 A | 2010-12-03 A |  | 100% |  |  |  |  | 144h | 144h |
| 28 | 8.1 | Deploy NBIA for Anna to experiment on | 1d | 2010-11-16 A | 2010-11-16 A |  | 100% |  |  |  | Jim | 8h | 8h |
| 29 | 8.2 | SME experimentation | 1w | 2010-11-17 A | 2010-11-23 A | 28 | 100% |  |  |  | Anna | 40h | 40h |
| 30 | 8.3 | Review SME feedback | 1d | 2010-11-24 A | 2010-11-24 A | 29 | 100% |  |  |  | Eric; Qinyan | 16h | 16h |
| 31 | 8.4 | Map DICOM tags to NBIA internal domain model (includes code changes) | 1w | 2010-11-29 A | 2010-12-03 A | 30 | 100% |  |  |  | Qinyan | 40h | 40h |
| 32 | 8.5 | Add modality info to web search UI | 1w | 2010-11-19 A | 2010-11-29 A |  | 100% |  |  | must start on 2010-11-19 | Prakash | 40h | 40h |
| 33 | 9 | **NBIA 5.0** | 24d? | 2010-11-12 A | 2010-12-17 |  | 98% | 0.49d? | 0d |  |  | 395.4h | 387.4h |
| 34 | 9.1 | Decouple deletion dao-business logic (Data Access Enhancements) | 1w | 2010-11-17 A | 2010-11-23 A |  | 100% |  |  | must start on 2010-11-17 | Jim | 40h | 40h |
| 35 | 9.2 | AHP3 Support | 14d? | 2010-11-16 A | 2010-12-07 A |  | 100% |  |  | must start on 2010-11-16 | Eric2 | 112h | 112h |
| 36 | 9.3 | Update Installation Guide | 1d | 2010-11-17 A | 2010-11-17 A |  | 100% |  |  | must start on 2010-11-17 | Eric | 4.4h | 4.4h |
| 37 | 9.4 | Appsupport Review of Installation Guide | 3d | 2010-11-19 A | 2010-11-23 A |  | 100% |  |  | must start on 2010-11-19 | Brian | 24h | 24h |
| 38 | 9.5 | Push Tag #1 to QA | 1h | 2010-11-12 A | 2010-11-12 A |  | 100% |  |  | start no earlier than 2010-11-12 | Eric | 1h | 1h |
| 39 | 9.6 | Prepare release notes | 4h | 2010-11-12 A | 2010-11-12 A | 38 | 100% |  |  |  | Eric | 4h | 4h |
| 40 | 9.7 | Push Tag #2 to QA | 1h | 2010-11-24 A | 2010-11-24 A | 34, 39 | 100% |  |  |  | Eric | 1h | 1h |
| 41 | 9.8 | QA Testing | 16d | 2010-11-18 A | 2010-12-13 A | 38 | 100% |  |  | must finish on 2010-12-13 | Quy | 128h | 128h |
| 42 | 9.9 | Migrate staging MySQL -> Oracle | 3d | 2010-12-03 A | 2010-12-07 A |  | 100% |  |  | must finish on 2010-12-07 | Eric | 24h | 24h |
| 43 | 9.10 | NBIA 5.0 Staging | 1d | 2010-12-13 A | 2010-12-13 A | 42 | 100% |  |  | must start on 2010-12-13 | Eric | 8h | 8h |
| 44 | 9.11 | Sanity Regression against staging | 1d? | 2010-12-13 A | 2010-12-14 A | 43 | 100% |  |  | must start on 2010-12-13 | Eric; Quy | 16h | 16h |
| 45 | 9.12 | Order AppScan on staging | 1h | 2010-12-14 A | 2010-12-14 A |  | 100% |  |  | start no earlier than 2010-12-14 | Eric | 1h | 1h |
| 46 | 9.13 | Migrate production MySQL -> Oracle | 3d | 2010-12-13 A | 2010-12-15 A |  | 100% |  |  | must start on 2010-12-13 | Eric | 24h | 24h |
| 47 | 9.14 | NBIA 5.0 Production | 1d | 2010-12-17 | 2010-12-17 | 46, 45 |  |  | 0d | must start on 2010-12-17 | Eric | 8h |  |
| 48 | 10 | **RSNA (Jim)** | 5d | 2010-11-29 A | 2010-12-03 A |  | 100% |  |  |  |  | 40h | 40h |
| 49 | 10.1 | CTP meeting with John | 1d | 2010-11-29 A | 2010-11-29 A |  | 100% |  |  | must start on 2010-11-29 | Jim | 8h | 8h |
| 50 | 10.2 | Attend Session of Steamline Imaging Server | 1d | 2010-11-30 A | 2010-11-30 A | 49 | 100% |  |  |  | Jim | 8h | 8h |
| 51 | 10.3 | Check out google earth Imaging Technology | 1d | 2010-12-01 A | 2010-12-01 A | 50 | 100% |  |  |  | Jim | 8h | 8h |
| 52 | 10.4 | Research for Path Imaging Storage in DICOM format | 1d | 2010-12-02 A | 2010-12-02 A | 51 | 100% |  |  | start no earlier than 2010-11-29 | Jim | 8h | 8h |
| 53 | 10.5 | Attend session of Ultrasound Imaging to seek a better way to implement NBIA | 4h | 2010-12-03 A | 2010-12-03 A | 52 | 100% |  |  |  | Jim | 4h | 4h |
| 54 | 10.6 | Check out some products with Path Imaging Storage | 4h | 2010-12-03 A | 2010-12-03 A | 53 | 100% |  |  | finish no earlier than 2010-12-03 | Jim | 4h | 4h |

Notes:
- 50: Fake dependency here to make life easier

| ID | WBS | Task | Duration | Start | Finish | Predecessors | Complete | Total slack | Constraint | Resources | Work | Actual work |
| --- | --- | --- | --- | --- | --- | --- | --- | --- | --- | --- | --- | --- |
| 55 | 11 | **External Model Harmonization** | 6d | 2010-11-29 A | 2010-12-06 A |  | 100% |  |  |  | 24h | 24h |
| 56 | 11.1 | CBIIT Self-Study on DSR,metadata,etc. pt 1 | 2d | 2010-11-29 A | 2010-11-30 A |  | 100% |  | must start on 2010-11-29 | Prakash | 16h | 16h |
| 57 | 11.2 | CBIIT Self-Study on DSR,metadata,etc. pt 2 | 1d | 2010-12-06 A | 2010-12-06 A |  | 100% |  | must start on 2010-12-06 | Prakash | 8h | 8h |
| 58 | 12 | **Bug Fixing** | 16.5d | 2010-11-17 | 2010-12-13 |  |  | 0d |  |  |  |  |
| 59 | 12.1 | Add warning text to GUI installer about potential to wipe out CTP storage system | 3h | 2010-11-17 | 2010-11-17 |  |  | 0d | must start on 2010-11-17 |  |  |  |
| 60 | 12.2 | GUI installer fails on upgrade from NBIA 4.4 | 2d | 2010-11-18 | 2010-11-19 |  |  | 0d | must start on 2010-11-18 |  |  |  |
| 61 | 12.3 | Zipping of download basket returns empty basket | 1d | 2010-11-19 | 2010-11-19 |  |  | 0d | must start on 2010-11-19 |  |  |  |
| 62 | 12.4 | GUI installer fails when doing install with MySQL | 4h | 2010-11-23 | 2010-11-23 |  |  | 0d | must start on 2010-11-23 |  |  |  |
| 63 | 12.5 | FTP downloads do not record the download the same way the HTTP and Download Mgr downloads do | 4d | 2010-12-01 | 2010-12-06 |  |  | 0d | must start on 2010-12-01 |  |  |  |
| 64 | 12.6 | FTP download that includes remote series fails | 2d | 2010-12-02 | 2010-12-03 |  |  | 0d | must start on 2010-12-02 |  |  |  |
| 65 | 12.7 | NCIA grid service port number updating from 21080 to 8080 | 2d | 2010-12-01 | 2010-12-02 |  |  | 0d | must start on 2010-12-01 |  |  |  |
| 66 | 12.8 | Upgrading NBIA 4.4 to 5.0 GUI Installation failed (AHP3 regression) | 1d | 2010-12-03 | 2010-12-03 |  |  | 0d | must start on 2010-12-03 |  |  |  |
| 67 | 12.9 | NBIA 5.0 local instance with Oracle backend not working when integrated with UPT | 2d | 2010-12-09 | 2010-12-10 |  |  | 0d | must start on 2010-12-09 |  |  |  |
| 68 | 12.10 | Download Manager fails to download remote series | 4h | 2010-12-11 | 2010-12-13 |  |  | 0d | must start on 2010-12-11 |  |  |  |
| 69 | 13 | **AIM Search Prototype** | 8.5d | 2010-12-01 A | 2010-12-13 A |  | 100% |  |  |  | 40h | 40h |
| 70 | 13.1 | Search UI | 3d | 2010-12-01 A | 2010-12-03 A |  | 100% |  | must start on 2010-12-01 | Eric | 24h | 24h |
| 71 | 13.2 | **AIM Submission** | 5.5d | 2010-12-06 A | 2010-12-13 A |  | 100% |  |  |  | 16h | 16h |
| 72 | 13.2.1 | Annotation Recognizer | 4h | 2010-12-06 A | 2010-12-06 A | 70 | 100% |  |  | Eric | 4h | 4h |
| 73 | 13.2.2 | AIM Parsing | 1d | 2010-12-09 A | 2010-12-09 A | 72 | 100% |  |  | Eric | 8h | 8h |
| 74 | 13.2.3 | Add relational tables | 4h | 2010-12-13 A | 2010-12-13 A | 73 | 100% |  |  | Eric | 4h | 4h |
| 75 | 14 | **Transition Documentation** | 15d | 2010-12-08 A | 2010-12-30 A |  | 100% |  |  |  | 400h | 400h |
| 76 | 14.1 | Grid Service | 5d | 2010-12-08 A | 2010-12-14 A |  | 100% |  | must start on 2010-12-08 | Eric | 40h | 40h |
| 77 | 14.2 | Aggregate documentation | 2d | 2010-12-29 A | 2010-12-30 A |  | 100% |  | must start on 2010-12-29 | Eric | 16h | 16h |
| 78 | 14.3 | Ultrasound leftovers | 3d | 2010-12-08 A | 2010-12-10 A |  | 100% |  | must start on 2010-12-08 | Qinyan | 24h | 24h |
| 79 | 14.4 | Cedara | 3d | 2010-12-09 A | 2010-12-13 A | 78 | 100% |  |  | Qinyan | 24h | 24h |
| 80 | 14.5 | QC Tool | 2d | 2010-12-14 A | 2010-12-15 A | 79 | 100% |  |  | Qinyan | 16h | 16h |
| 81 | 14.6 | Shared List | 4d | 2010-12-16 A | 2010-12-21 A | 80 | 100% |  |  | Qinyan | 32h | 32h |
| 82 | 14.7 | Collection Description | 4d | 2010-12-22 A | 2010-12-29 A | 81 | 100% |  |  | Qinyan | 32h | 32h |
| 83 | 14.8 | CTP | 5d | 2010-12-08 A | 2010-12-14 A |  | 100% |  | must start on 2010-12-08 | Jim | 40h | 40h |
| 84 | 14.9 | Database Adapter | 3d | 2010-12-15 A | 2010-12-17 A | 83 | 100% |  |  | Jim | 24h | 24h |
| 85 | 14.10 | Dynamic Search | 3d | 2010-12-20 A | 2010-12-22 A | 84 | 100% |  |  | Jim | 24h | 24h |
| 86 | 14.11 | Deletion | 3d | 2010-12-23 A | 2010-12-29 A | 85 | 100% |  |  | Jim | 24h | 24h |
| 87 | 14.12 | Saved Query | 3d | 2010-12-09 A | 2010-12-13 A |  | 100% |  | must start on 2010-12-09 | Prakash | 24h | 24h |
| 88 | 14.13 | Data Basket | 3d | 2010-12-14 A | 2010-12-16 A | 87 | 100% |  |  | Prakash | 24h | 24h |
| 89 | 14.14 | HTTP/FTP Download | 3d | 2010-12-17 A | 2010-12-21 A | 88 | 100% |  |  | Prakash | 24h | 24h |
| 90 | 14.15 | Download Mgr | 4d | 2010-12-22 A | 2010-12-29 A | 89 | 100% |  |  | Prakash | 32h | 32h |

Notes:
- 58: add subtask here for every bug fixed

| ID | WBS | Task | Type | Duration | Start | Finish | Predecessors | Complete | Remaining | Total slack | Free slack | Constraint | Resources | Work | Actual work |
| --- | --- | --- | --- | --- | --- | --- | --- | --- | --- | --- | --- | --- | --- | --- | --- |
| 91 | 15 | **Vacations** |  | 1d? | 2010-09-27 | 2010-09-27 |  |  |  | 130d |  |  |  |  |  |
| 92 | 15.1 | Eric (11/26,12/13, 12/20 - 12/28, 12/31 ) |  | 1d? | 2010-09-27 | 2010-09-27 |  |  |  | 83d |  |  |  |  |  |
| 93 | 15.2 | Jim (11/26, 12/24, 12/30-12/31) |  | 1d? | 2010-09-27 | 2010-09-27 |  |  |  | 83d |  |  |  |  |  |
| 94 | 15.3 | Qinyan (11/26, 12/24, 12/31) |  | 1d? | 2010-09-27 | 2010-09-27 |  |  |  | 83d |  |  |  |  |  |
| 95 | 15.4 | Praskash (11/26, 12/29-12/31) |  | 1d? | 2010-09-27 | 2010-09-27 |  |  |  | 83d |  |  |  |  |  |
| 96 | 16 | ==============End of POP=============== | milestone | 0d | 2010-12-31 | 2010-12-31 |  |  |  | 0d |  | must start on 2010-12-31 |  |  |  |
| 97 | 17 | SAIC stuff |  | 1w | 2011-01-03 A | 2011-01-07 A |  | 100% |  |  |  | must start on 2011-01-03 | Eric; Qinyan; Prakash | 120h | 120h |
| 98 | 18 | **Bugs (post 5.0)** |  | 4d | 2011-01-10 A | 2011-01-13 A |  | 100% |  |  |  |  |  | 32h | 32h |
| 99 | 18.1 | Deleting > 1000 series when they are referenced by shared list causes exception |  | 2d | 2011-01-10 A | 2011-01-11 A |  | 100% |  |  |  | must start on 2011-01-10 | Jim | 16h | 16h |
| 100 | 18.2 | Shared List creation can fail when greater than 1000 series elements |  | 2d | 2011-01-12 A | 2011-01-13 A | 99 | 100% |  |  |  |  | Jim | 16h | 16h |
| 101 | 19 | **Misc 5.1 Issues** |  | 27d | 2011-01-24 A | 2011-03-01 |  | 26% | 20d | 23d |  |  |  | 216h | 56h |
| 102 | 19.1 | [NBIA-275] Merge Modality Description Feature |  | 1d | 2011-01-24 A | 2011-01-24 A |  | 100% |  |  |  | must start on 2011-01-24 | Prakash | 8h | 8h |
| 103 | 19.2 | [NBIA-286] Merge FTP logging bug fix |  | 1d | 2011-01-25 A | 2011-01-25 A | 102 | 100% |  |  |  |  | Prakash | 8h | 8h |
| 104 | 19.3 | [NBIA-324] CQL that targets TrialDataProvenance will not return desired result set |  | 2w | 2011-01-26 A | 2011-02-08 | 103 | 50% | 1w | 33d | 0d |  | Prakash | 80h | 40h |
| 105 | 19.4 | [NBIA-326] getNumberOfStudyTimePointForPatient returns cryptic error when Patient ID is not found. |  | 1w | 2011-02-09 | 2011-02-15 | 104 |  |  | 33d |  |  | Prakash | 40h |  |
| 106 | 19.5 | [NBIA-320] Please add a true select all feature to the QC tool |  | 1w | 2011-02-16 | 2011-02-22 | 105 |  |  | 28d |  |  | Prakash | 40h |  |
| 107 | 19.6 | [NBIA-224 ] Remove storage service port number from the config file installer property files |  | 1w | 2011-02-23 | 2011-03-01 | 106 |  |  | 23d |  |  | Prakash | 40h |  |
| 108 | 20 | **Ultrasound Search Revisited Part 3 (branch)** |  | 37d | 2011-01-10 A | 2011-03-01 |  | 56% | 16.3d | 23d |  |  |  | 376h | 210.4h |
| 109 | 20.1 | Merge branch into trunk |  | 1d | 2011-01-10 A | 2011-01-10 A | 97 | 100% |  |  |  |  | Qinyan | 8h | 8h |
| 110 | 20.2 | Update submission module to index tags |  | 7d | 2011-01-12 A | 2011-01-20 A | 109, 99 | 100% |  |  |  |  | Jim | 56h | 56h |
| 111 | 20.3 | Add fields to dynamic search |  | 3d | 2011-01-19 A | 2011-01-25 A | 110 | 100% |  |  |  |  | Jim | 24h | 24h |
| 112 | 20.4 | **Update search to include ultrasound tags** |  | 8d | 2011-01-11 A | 2011-01-20 A |  | 100% |  |  |  |  |  | 64h | 64h |
| 113 | 20.4.1 | Code |  | 1w | 2011-01-11 A | 2011-01-17 A | 109 | 100% |  |  |  |  | Qinyan | 40h | 40h |
| 114 | 20.4.2 | Unit Test |  | 3d | 2011-01-18 A | 2011-01-20 A | 113 | 100% |  |  |  |  | Qinyan | 24h | 24h |

| ID | WBS | Task | Duration | Start | Finish | Predecessors | Complete | Remaining | Total slack | Free slack | Constraint | Resources | Work | Actual work |
| --- | --- | --- | --- | --- | --- | --- | --- | --- | --- | --- | --- | --- | --- | --- |
| 115 | 20.5 | **Remote Search impact** | 13d | 2011-01-21 A | 2011-02-08 |  | 56% | 5.7d | 23d | 0d |  |  | 104h | 58.4h |
| 116 | 20.5.1 | Search Terms | 7d | 2011-01-21 A | 2011-01-31 A | 114 | 100% |  |  |  |  | Qinyan | 56h | 56h |
| 117 | 20.5.2 | Image Drill Down (Backward Compatibility) | 6d | 2011-02-01 A | 2011-02-08 | 116 | 5% | 5.7d | 23d |  |  | Qinyan | 48h | 2.4h |
| 118 | 20.6 | **Test** | 15d | 2011-02-09 | 2011-03-01 |  |  |  | 23d |  |  |  | 120h |  |
| 119 | 20.6.1 | Update Requirements | 3d | 2011-02-09 | 2011-02-11 | 115 |  |  | 24d | 0d |  | Qinyan | 24h |  |
| 120 | 20.6.2 | Develop Functional Test Plans | 1w | 2011-02-14 | 2011-02-18 | 119 |  |  | 24d | 0d |  | Qinyan | 40h |  |
| 121 | 20.6.3 | Execute Tests | 7d | 2011-02-21 | 2011-03-01 | 120 |  |  | 23d |  |  | Qinyan | 56h |  |
| 122 | 21 | **AIM Search Prototype Part 2** | 9.12d | 2011-01-11 A | 2011-01-24 A |  | 100% |  |  |  |  |  | 73h | 73h |
| 123 | 21.1 | **Local** | 9.12d | 2011-01-11 A | 2011-01-24 A |  | 100% |  |  |  |  |  | 73h | 73h |
| 124 | 21.1.1 | Data Access (domain, and DAO) | 3d | 2011-01-11 A | 2011-01-13 A | 97 | 100% |  |  |  | must start on 2011-01-11 | Eric | 24h | 24h |
| 125 | 21.1.2 | Connect Search UI to backend | 1w | 2011-01-14 A | 2011-01-20 A | 124 | 100% |  |  |  |  | Eric | 40h | 40h |
| 126 | 21.1.3 | AIM de-identification configuration | 1d | 2011-01-21 A | 2011-01-21 A | 125 | 100% |  |  |  |  | Eric | 8h | 8h |
| 127 | 21.1.4 | Evaluate/Demo | 1h | 2011-01-24 A | 2011-01-24 A | 126 | 100% |  |  |  |  | Eric | 1h | 1h |
| 128 | 22 | **caGrid 1.4/CQL 2.0 exploration** | 25d | 2011-01-25 A | 2011-03-01 |  | 24% | 19d | 23.75d |  |  |  | 200h | 48h |
| 129 | 22.1 | Install caGrid 1.4 | 1d | 2011-01-25 A | 2011-01-26 A | 111 | 100% |  |  |  |  | Jim | 8h | 8h |
| 130 | 22.2 | Generate NBIAService with caGrid 1.4 | 1w | 2011-01-26 A | 2011-02-02 A | 129 | 100% |  |  |  |  | Jim | 40h | 40h |
| 131 | 22.3 | Research differences between CQL 2.0 and 1.x | 1w | 2011-02-02 | 2011-02-09 | 130 |  |  | 23.75d | 0d |  | Jim | 40h |  |
| 132 | 22.4 | Migrate public metadata filter to CQL 2 | 14d | 2011-02-09 | 2011-03-01 | 131 |  |  | 23.75d |  |  | Jim | 112h |  |
| 133 | 23 | **NIAMS Deployments** | 26d | 2011-01-24 A | 2011-02-28 |  | 29% | 18.42d | 24d |  |  |  | 96h | 28h |
| 134 | 23.1 | NIAMS 4.5 Deployment - Staging | 4h | 2011-01-24 A | 2011-01-24 A |  | 100% |  |  |  | start no earlier than 2011-01-24 | Eric | 4h | 4h |
| 135 | 23.2 | **NIAMS 5.0 Deployment - Staging** | 7.5d | 2011-01-24 A | 2011-02-02 |  | 55% | 3.41d | 0d |  |  |  | 44h | 24h |
| 136 | 23.2.1 | DB migration | 1w | 2011-01-24 A | 2011-01-28 | 126 | 60% | 0.4w | 2d |  |  | Eric | 40h | 24h |
| 137 | 23.2.2 | Deploy | 4h | 2011-02-02 | 2011-02-02 | 136 |  |  | 0d |  | must start on 2011-02-02 | Eric | 4h |  |
| 138 | 23.3 | NIAMS 4.5 Deployment - Prod | 4h | 2011-02-21 | 2011-02-21 | 134 |  |  | 0d |  | must start on 2011-02-21 | Eric | 4h |  |

| ID | WBS | Task | Duration | Start | Finish | Predecessors | Complete | Remaining | Total slack | Free slack | Constraint | Resources | Work | Actual work |
| --- | --- | --- | --- | --- | --- | --- | --- | --- | --- | --- | --- | --- | --- | --- |
| 139 | 23.4 | **NIAMS 5.0 Deployment - Prod** | 5.5d | 2011-02-21 | 2011-02-28 |  |  |  | 24d |  |  |  | 44h |  |
| 140 | 23.4.1 | DB migration | 1w | 2011-02-21 | 2011-02-28 | 138 |  |  | 24d | 0d |  | Eric | 40h |  |
| 141 | 23.4.2 | Deploy | 4h | 2011-02-28 | 2011-02-28 | 140 |  |  | 24d |  |  | Eric | 4h |  |
| 142 | 24 | **NBIA 5.0.1** | 16.5d | 2011-01-24 A | 2011-02-15 |  | 46% | 8.9d | 0d |  |  |  | 89h | 41h |
| 143 | 24.1 | **NBIA 5.0.1 Staging** | 11.5d | 2011-01-24 A | 2011-02-08 |  | 48% | 5.95d | 0d |  |  |  | 85h | 41h |
| 144 | 24.1.1 | Cut tag for QA | 1h | 2011-01-24 A | 2011-01-24 A |  | 100% |  |  |  | start no earlier than 2011-01-24 | Eric | 1h | 1h |
| 145 | 24.1.2 | QA Testing | 2w | 2011-01-24 A | 2011-02-07 | 144 | 50% | 1w | 0.88d |  |  | Quy | 80h | 40h |
| 146 | 24.1.3 | Deploy | 4h | 2011-02-08 | 2011-02-08 | 145 |  |  | 0d |  | must start on 2011-02-08 | Eric | 4h |  |
| 147 | 24.2 | NBIA 5.0.1 Production | 4h | 2011-02-15 | 2011-02-15 | 144 |  |  | 0d |  | must start on 2011-02-15 | Eric | 4h |  |
| 148 | 25 | LSDAM, BRIDG support | 3mo | 2011-01-10 | 2011-04-01 |  |  |  | 0d |  | must start on 2011-01-10 | Eric2; Prakash2 | 960h |  |
| 149 | 26 | Transition | 23d | 2011-03-01 | 2011-03-31 |  |  |  | 0d |  | must start on 2011-03-01 | Eric; Qinyan; Prakash; Jim | 736h |  |
